# Online Bakery shop

Schedule from MS Project, 2022-10-31 to 2023-04-12, status date 2022-11-04, 6 hours a day, costs in $, A marks actual dates.
CPIS334
Mai Mohamad Khalil Company limited

## Calendars

- Standard: Mon-Fri 08:00-12:00, 13:00-17:00; Sat-Sun off. Exceptions (off unless hours are given): 2022-12-30 to 2023-01-04 (New Year).
- Shop Calendar: Mon-Thu 08:00-12:00, 13:00-17:00; Fri-Sat off; Sun 08:00-14:00.

## Resources

| Resource | Group | Rate | Cost per use |
| --- | --- | --- | --- |
| Electirical Contractor |  | 65 | 35 |
| UI software |  |  |  |
| HardWare |  | 1500 |  |
| Map of shelf |  | 120 | 25 |
| Data Base |  | 554 | 14 |
| Web server |  | 78 | 100 |
| Esraa | finder |  |  |
| Abdulrhman | Mangment | 547 |  |
| Abdullah | Mangment | 190 |  |
| Dema | Programmar | 100 |  |
| Sultan | Mangment | 130 |  |
| Zienah | Mangment | 100 |  |
| Dania | Designer | 50 |  |
| Hton | Mangment | 30 |  |
| Anfal | Mangment | 800 |  |
| Areej | mangment | 687 |  |
| Mai | mangment | 89 |  |
| Printer |  | 34 |  |
| RentOffice |  | 54 |  |
| Ink printer |  | 56 |  |
| Mroining Coffe |  |  |  |
| Jana | Programmar | 53 |  |
| Dana | Programmar | 34 |  |

## Schedule

| ID | WBS | Task | Type | Duration | Start | Finish | Predecessors | Complete | Remaining | Baseline start | Baseline finish | Baseline duration | Total slack | Free slack | Constraint | Calendar | Resources | Work | Actual work | Cost | Baseline cost | Actual cost |
| --- | --- | --- | --- | --- | --- | --- | --- | --- | --- | --- | --- | --- | --- | --- | --- | --- | --- | --- | --- | --- | --- | --- |
| 1 | 1 | **Project Initiation** |  | 7.67d | 2022-10-31 08:00 A | 2022-11-07 17:00 |  | 69% | 2.36d | 2022-10-31 08:00 | 2022-11-04 17:00 | 6.67d | 0d |  |  | Shop Calendar |  | 52h | 36h | 33,560 | 32,000 | 26,120 |
| 2 | 1.1 | Create the project Charter |  | 2.67d | 2022-10-31 08:00 A | 2022-11-01 17:00 A |  | 100% |  | 2022-10-31 08:00 | 2022-11-01 17:00 | 2.67d |  |  |  | Shop Calendar | Anfal | 16h | 16h | 12,800 |  | 12,800 |
| 3 | 1.2 | Define the Project Approach |  | 4d | 2022-11-02 08:00 A | 2022-11-07 17:00 | 2 | 67% | 1.33d | 2022-11-02 08:00 | 2022-11-04 17:00 | 4d | 0d |  |  | Shop Calendar | Anfal | 24h | 16h | 19,200 |  | 12,800 |
| 4 | 1.3 | Create the Stakehokder Register |  | 2d | 2022-11-03 13:00 A | 2022-11-07 17:00 | 3FF | 33% | 1.33d | 2022-11-03 08:00 | 2022-11-04 17:00 | 2.67d | 0d |  |  | Shop Calendar | Sultan | 12h | 4h | 1,560 |  | 520 |
| 5 | 2 | **Project Planning** |  | 26.33d | 2022-11-08 08:00 | 2022-12-06 15:00 |  |  |  | 2022-10-31 08:00 | 2022-11-16 17:00 | 17.33d | 0d |  |  | Shop Calendar |  | 136h |  | 56,310 | 71,448 |  |
| 6 | 2.1 | Define Project Scope |  | 3d | 2022-11-08 08:00 | 2022-11-10 10:00 | 4 |  |  | 2022-11-07 08:00 | 2022-11-09 17:00 | 4d | 0d |  |  | Shop Calendar | Areej | 18h |  | 12,366 |  |  |
| 7 | 2.2 | Collect Requirments |  | 2d | 2022-11-10 10:00 | 2022-11-14 15:00 | 6SF+2d |  |  | 2022-11-02 13:00 | 2022-11-08 12:00 | 5.33d | -2d | 0d |  | Shop Calendar | Areej | 12h |  | 8,244 |  |  |
| 8 | 2.3 | Create WBS |  | 2.67d | 2022-11-14 08:00 | 2022-11-15 17:00 | 7 |  |  | 2022-11-08 13:00 | 2022-11-10 12:00 | 2.67d | -1d | 0d | must start on 2022-11-14 08:00 | Shop Calendar | Anfal | 16h |  | 12,800 |  |  |
| 9 | 2.4 | Devolp The time Schedule |  | 1.33d | 2022-11-16 08:00 | 2022-11-16 17:00 | 8 |  |  | 2022-11-10 13:00 | 2022-11-11 12:00 | 1.33d | 0d |  |  | Shop Calendar | Anfal | 8h |  | 6,400 |  |  |
| 10 | 2.5 | Estimate the Project cost |  | 4d | 2022-11-17 08:00 | 2022-11-22 17:00 | 9 |  |  | 2022-10-31 08:00 | 2022-11-02 17:00 | 4d | 0d |  |  | Shop Calendar | Zienah | 24h |  | 2,400 |  |  |
| 11 | 2.6 | Determine the Budget |  | 1.33d | 2022-11-23 08:00 | 2022-11-23 17:00 | 10 |  |  | 2022-11-03 08:00 | 2022-11-03 17:00 | 1.33d | 0d |  |  | Shop Calendar | Zienah | 8h |  | 800 |  |  |
| 12 | 2.7 | Identirfy rsiks an plan risk resonses |  | 4d | 2022-11-24 08:00 | 2022-11-29 17:00 | 11 |  |  | 2022-11-04 08:00 | 2022-11-08 17:00 | 4d | 0d |  |  | Shop Calendar | Abdullah | 24h |  | 4,560 |  |  |
| 13 | 2.8 | Plan Stakeholder |  | 3d | 2022-11-30 08:00 | 2022-12-05 15:00 | 12 |  |  | 2022-11-09 08:00 | 2022-11-15 17:00 | 6.67d | 0d |  |  | Shop Calendar | Sultan | 18h |  | 2,340 |  |  |
| 14 | 2.9 | Decision to proceed further |  | 1.33d | 2022-12-05 15:00 | 2022-12-06 15:00 | 13 |  |  | 2022-11-16 08:00 | 2022-11-16 17:00 | 1.33d | 0d |  |  | Shop Calendar | Anfal | 8h |  | 6,400 |  |  |
| 15 | 3 | Project plan | milestone | 0d | 2022-10-31 08:00 A | 2022-10-31 08:00 A | 14 | 100% |  | 2022-10-31 08:00 | 2022-10-31 08:00 | 0d |  |  |  | Shop Calendar |  |  |  |  |  |  |
| 16 | 4 | **Project Execution** |  | 15.67d | 2022-12-06 15:00 | 2022-12-22 17:00 |  |  |  | 2022-11-02 08:00 | 2022-11-15 17:00 | 13.33d | 0d |  |  | Shop Calendar |  | 146h |  | 12,576 | 6,700 |  |
| 17 | 4.1 | Purchasing "of-shelf" map software |  | 1.33d | 2022-12-06 15:00 | 2022-12-07 15:00 | 14, 15 |  |  | 2022-11-11 13:00 | 2022-11-14 12:00 | 1.33d | 0d |  |  | Shop Calendar | Mai | 8h |  | 712 | 712 |  |
| 18 | 4.2 | Purchasing "of-shelf" DataBase |  | 1.33d | 2022-12-07 15:00 | 2022-12-08 15:00 | 17 |  |  | 2022-11-14 13:00 | 2022-11-15 12:00 | 1.33d | 0d |  |  | Shop Calendar | Mai | 8h |  | 712 | 712 |  |
| 19 | 4.3 | Purchasing Web Server |  | 1.33d | 2022-12-07 15:00 | 2022-12-08 15:00 | 18FF |  |  | 2022-11-14 13:00 | 2022-11-15 12:00 | 1.33d | 0d |  |  | Shop Calendar | Abdulrhman | 8h |  | 4,376 | 4,376 |  |
| 20 | 4.4 | **Bulid the interactive interfaces of bakery Shop** |  | 6d | 2022-12-08 15:00 | 2022-12-15 12:00 |  |  |  | 2022-11-02 08:00 | 2022-11-04 10:00 | 3d | 0d |  |  | Shop Calendar |  | 42h |  | 2,136 | 900 |  |
| 21 | 4.4.1 | Design the interfaces |  | 2d | 2022-12-08 15:00 | 2022-12-13 10:00 | 19 |  |  | 2022-11-02 08:00 | 2022-11-03 12:00 | 2d | 0d |  | start no earlier than 2022-11-02 08:00 | Shop Calendar | Dania | 12h |  | 600 |  |  |
| 22 | 4.4.2 | Implement the interfaces |  | 1d | 2022-12-13 10:00 | 2022-12-13 17:00 | 21 |  |  | 2022-11-03 13:00 | 2022-11-04 10:00 | 1d | 0d |  |  | Shop Calendar | Dania | 6h |  | 300 |  |  |
| 23 | 4.4.3 | Tset the interfaces |  | 2d | 2022-12-14 08:00 | 2022-12-15 12:00 | 22 |  |  | 2022-11-02 08:00 | 2022-11-03 13:00 | 2d | 0d |  |  | Shop Calendar | Dania; Jana | 24h |  | 1,236 |  |  |
| 24 | 4.5 | Integrate the SoftWare |  | 5.33d | 2022-12-14 08:00 | 2022-12-20 17:00 | 23FS-2d |  |  | 2022-11-02 08:00 | 2022-11-07 17:00 | 5.33d | 0d |  | finish no later than 2022-12-22 14:00 | Shop Calendar | Dema | 32h |  | 3,200 |  |  |
| 25 | 4.6 | Test the integrated System |  | 8d | 2022-12-14 08:00 | 2022-12-22 17:00 | 24SS |  |  | 2022-11-08 08:00 | 2022-11-15 17:00 | 8d | 0d |  |  | Shop Calendar | Hton | 48h |  | 1,440 |  |  |

Notes:
- 1: This is a summary task. Use summary tasks to help organize your project into sections.
- 4: This is a milestone task. Set a task to 0d duration to mark an event in your project.
- 17: Tasks with the pushpin next to them are manually scheduled tasks. Use them when you don't want Project to move the task. Also, you can enter freeform text in the duration, start and finish fields or leave them blank if you don't have all the information yet.

| ID | WBS | Task | Type | Duration | Start | Finish | Predecessors | Baseline start | Baseline finish | Baseline duration | Total slack | Constraint | Calendar | Resources | Work | Cost | Baseline cost |
| --- | --- | --- | --- | --- | --- | --- | --- | --- | --- | --- | --- | --- | --- | --- | --- | --- | --- |
| 26 | 5 | **Project Monitoring and Contrlling** |  | 23d | 2022-12-26 08:00 | 2023-01-18 17:00 |  | 2022-11-18 08:00 | 2023-01-17 14:00 | 51.5d | 0d |  | Shop Calendar |  | 96h | 18,512 | 18,512 |
| 27 | 5.1 | Check the validation of the project Scope |  | 2.67d | 2022-12-26 08:00 | 2022-12-27 17:00 | 25 | 2022-11-18 08:00 | 2022-11-21 17:00 | 2.67d | 0d |  | Shop Calendar | Abdullah | 16h | 3,040 | 3,040 |
| 28 | 5.2 | check the met of objectives |  | 1.33d | 2022-12-28 08:00 | 2022-12-28 17:00 | 27 | 2022-11-22 08:00 | 2022-11-22 17:00 | 1.33d | 0d |  | Shop Calendar | Abdulrhman | 8h | 4,376 | 4,376 |
| 29 | 5.3 | check the meet of cost/budget |  | 5.33d | 2022-12-29 08:00 | 2023-01-10 17:00 | 28 | 2022-11-23 08:00 | 2022-11-28 17:00 | 5.33d | 0d |  | Shop Calendar | Zienah | 32h | 3,200 | 3,200 |
| 30 | 5.4 | check the met of project quality |  | 2.67d | 2023-01-11 08:00 | 2023-01-12 17:00 | 29 | 2022-11-29 08:00 | 2022-11-30 17:00 | 2.67d | 0d |  | Shop Calendar | Hton | 16h | 480 | 480 |
| 31 | 5.5 | Risk control |  | 2.67d | 2023-01-16 08:00 | 2023-01-17 17:00 | 30 | 2022-12-01 08:00 | 2022-12-02 17:00 | 2.67d | 0d |  | Shop Calendar | Abdullah | 16h | 3,040 | 3,040 |
| 32 | 5.6 | Weekly Review |  | 1.33d | 2023-01-18 08:00 | 2023-01-18 17:00 | 31 | 2022-12-05 08:00 | 2022-12-05 17:00 | 1.33d | 0d |  | Shop Calendar | Abdulrhman | 8h | 4,376 | 4,376 |
| 33 | 6 | **Project Closing** |  | 62d | 2023-01-19 08:00 | 2023-03-28 17:00 |  | 2022-12-07 08:00 | 2023-01-06 17:00 | 25.33d | 0d |  | Shop Calendar |  | 312h | 15,664 |  |
| 34 | 6.1 | Test the System SoftWare |  | 4d | 2023-01-19 08:00 | 2023-01-24 17:00 | 32 | 2022-12-07 08:00 | 2022-12-09 17:00 | 4d | 0d | start no earlier than 2022-12-07 08:00 | Shop Calendar | Jana | 24h | 1,272 |  |
| 35 | 6.2 | Take Appoval from sponsor |  | 9.33d | 2023-01-25 08:00 | 2023-02-06 17:00 | 34 | 2022-12-07 08:00 | 2022-12-15 17:00 | 9.33d | 0d |  | Shop Calendar | Mai | 56h | 4,984 |  |
| 36 | 6.3 | Make the Bakery Shop software |  | 25.33d | 2023-02-07 08:00 | 2023-03-09 17:00 | 35 | 2022-12-07 08:00 | 2023-01-06 17:00 | 25.33d | 0d |  | Shop Calendar | Dana | 152h | 5,168 |  |
| 37 | 6.4 | Train the users on the system |  | 16.33d | 2023-03-12 08:00 | 2023-03-28 17:00 | 36 | 2022-12-07 08:00 | 2022-12-20 17:00 | 13.33d | 0d |  | Shop Calendar | Jana | 80h | 4,240 |  |
| 38 | 7 | Close Project | milestone | 0d | 2023-03-28 17:00 | 2023-03-28 17:00 | 37 | 2022-10-31 08:00 | 2022-10-31 08:00 | 0d | 0d | start no earlier than 2023-03-09 08:00 | Shop Calendar |  |  |  |  |
| 39 | 8 | **Project Weekly Review** |  | 14.67d | 2023-03-29 08:00 | 2023-04-12 17:00 |  | 2022-11-10 08:00 | 2023-01-05 12:00 | 48.67d | 0d |  |  |  | 72h | 9,360 |  |
| 40 | 8.1 | Project Weekly Review Project Review 1 |  | 4h | 2023-03-29 08:00 | 2023-03-29 12:00 | 38 | 2022-11-10 08:00 | 2022-11-10 12:00 | 4h | 0d | start no earlier than 2022-11-10 08:00 | Shop Calendar | Sultan | 4h | 520 |  |
| 41 | 8.2 | Project Weekly Review Project Review 2 |  | 4h | 2023-03-29 13:00 | 2023-03-29 17:00 | 40 | 2022-11-17 08:00 | 2022-11-17 12:00 | 4h | 0d | start no earlier than 2022-11-17 08:00 | Shop Calendar | Sultan | 4h | 520 |  |
| 42 | 8.3 | Project Weekly Review Project Review 3 |  | 4h | 2023-03-30 08:00 | 2023-03-30 12:00 | 41 | 2022-11-24 08:00 | 2022-11-24 12:00 | 4h | 0d | start no earlier than 2022-11-24 08:00 | Shop Calendar | Sultan | 4h | 520 |  |
| 43 | 8.4 | Project Weekly Review Project Review 4 |  | 4h | 2023-03-30 13:00 | 2023-03-30 17:00 | 42 | 2022-12-01 08:00 | 2022-12-01 12:00 | 4h | 0d | start no earlier than 2022-12-01 08:00 | Shop Calendar | Sultan | 4h | 520 |  |
| 44 | 8.5 | Project Weekly Review Project Review 5 |  | 4h | 2023-04-03 08:00 | 2023-04-03 12:00 | 43 | 2022-12-08 08:00 | 2022-12-08 12:00 | 4h | 0d | start no earlier than 2022-12-08 08:00 | Shop Calendar | Sultan | 4h | 520 |  |
| 45 | 8.6 | Project Weekly Review Project Review 6 |  | 4h | 2023-04-03 13:00 | 2023-04-03 17:00 | 44 | 2022-12-15 08:00 | 2022-12-15 12:00 | 4h | 0d | start no earlier than 2022-12-15 08:00 | Shop Calendar | Sultan | 4h | 520 |  |
| 46 | 8.7 | Project Weekly Review Project Review 7 |  | 4h | 2023-04-04 08:00 | 2023-04-04 12:00 | 45 | 2022-12-22 08:00 | 2022-12-22 12:00 | 4h | 0d | start no earlier than 2022-12-22 08:00 | Shop Calendar | Sultan | 4h | 520 |  |
| 47 | 8.8 | Project Weekly Review Project Review 8 |  | 4h | 2023-04-04 13:00 | 2023-04-04 17:00 | 46 | 2022-12-29 08:00 | 2022-12-29 12:00 | 4h | 0d | start no earlier than 2022-12-29 08:00 | Shop Calendar | Sultan | 4h | 520 |  |
| 48 | 8.9 | Project Weekly Review Project Review 9 |  | 4h | 2023-04-05 08:00 | 2023-04-05 12:00 | 47 | 2023-01-05 08:00 | 2023-01-05 12:00 | 4h | 0d | start no earlier than 2023-01-05 08:00 | Shop Calendar | Sultan | 4h | 520 |  |
| 49 | 8.10 | Project Weekly Review Project Review 10 |  | 4h | 2023-04-05 13:00 | 2023-04-05 17:00 | 48 |  |  |  | 0d | start no earlier than 2023-01-12 08:00 | Shop Calendar | Sultan | 4h | 520 |  |
| 50 | 8.11 | Project Weekly Review Project Review 11 |  | 4h | 2023-04-06 08:00 | 2023-04-06 12:00 | 49 |  |  |  | 0d | start no earlier than 2023-01-19 08:00 | Shop Calendar | Sultan | 4h | 520 |  |
| 51 | 8.12 | Project Weekly Review Project Review 12 |  | 4h | 2023-04-06 13:00 | 2023-04-06 17:00 | 50 |  |  |  | 0d | start no earlier than 2023-01-26 08:00 | Shop Calendar | Sultan | 4h | 520 |  |
| 52 | 8.13 | Project Weekly Review Project Review 13 |  | 4h | 2023-04-10 08:00 | 2023-04-10 12:00 | 51 |  |  |  | 0d | start no earlier than 2023-02-02 08:00 | Shop Calendar | Sultan | 4h | 520 |  |
| 53 | 8.14 | Project Weekly Review Project Review 14 |  | 4h | 2023-04-10 13:00 | 2023-04-10 17:00 | 52 |  |  |  | 0d | start no earlier than 2023-02-09 08:00 | Shop Calendar | Sultan | 4h | 520 |  |
| 54 | 8.15 | Project Weekly Review Project Review 15 |  | 4h | 2023-04-11 08:00 | 2023-04-11 12:00 | 53 |  |  |  | 0d | start no earlier than 2023-02-16 08:00 | Shop Calendar | Sultan | 4h | 520 |  |
| 55 | 8.16 | Project Weekly Review Project Review 16 |  | 4h | 2023-04-11 13:00 | 2023-04-11 17:00 | 54 |  |  |  | 0d | start no earlier than 2023-02-23 08:00 | Shop Calendar | Sultan | 4h | 520 |  |
| 56 | 8.17 | Project Weekly Review Project Review 17 |  | 4h | 2023-04-12 08:00 | 2023-04-12 12:00 | 55 |  |  |  | 0d | start no earlier than 2023-03-02 08:00 | Shop Calendar | Sultan | 4h | 520 |  |
| 57 | 8.18 | Project Weekly Review Project Review 18 |  | 4h | 2023-04-12 13:00 | 2023-04-12 17:00 | 56 |  |  |  | 0d | start no earlier than 2023-03-09 08:00 | Shop Calendar | Sultan | 4h | 520 |  |
